# 二期非车

Schedule from a web Gantt chart, 2025-04-15 to 2025-06-27.
Saturdays and Sundays are off

## Schedule

| ID | WBS | Task | Duration | Start | Finish | Complete | Status |
| --- | --- | --- | --- | --- | --- | --- | --- |
| 2 | 1 | 需求收集 | 14d | 2025-04-15 | 2025-05-02 | 100% | done |
| 3 | 2 | 原型设计 | 14d | 2025-04-15 | 2025-05-02 | 100% | done |
| 4 | 3 | 接口功能拆分设计 | 10d | 2025-04-21 | 2025-05-02 | 100% | done |
| 5 | 4 | 确定所需周边系统 | 5d | 2025-04-28 | 2025-05-02 | 100% | done |
| 6 | 5 | 后端基础架构搭建 | 1d | 2025-04-28 | 2025-04-28 |  |  |
| 7 | 6 | 后端权限校验功能接口 | 1d | 2025-04-28 | 2025-04-28 |  |  |
| 8 | 7 | 后端分页查询功能接口 | 1d | 2025-04-28 | 2025-04-28 |  |  |
| 9 | 8 | 后端机构信息查询接口 | 1d | 2025-04-28 | 2025-04-28 |  |  |
| 10 | 9 | 后端任务接收接口 | 1d | 2025-04-28 | 2025-04-28 |  |  |
| 11 | 10 | 后端任务解除接口 | 1d | 2025-04-28 | 2025-04-28 |  |  |
| 12 | 11 | 影像平台对接 | 1d | 2025-04-28 | 2025-04-28 |  |  |
| 13 | 12 | 后端任务提交接口 | 1d | 2025-04-28 | 2025-04-28 |  |  |
| 14 | 13 | 后端详情查看接口 | 1d | 2025-04-28 | 2025-04-28 |  |  |
| 15 | 14 | 后端任务新增、更新暂存接口 | 1d | 2025-04-28 | 2025-04-28 |  |  |
| 16 | 15 | 后端任务解除暂存接口 | 1d | 2025-04-28 | 2025-04-28 |  |  |
| 17 | 16 | 后端在保系统接口 | 1d | 2025-04-28 | 2025-04-28 |  |  |
| 18 | 17 | 前端报表界面绘制与权限对接 | 1d | 2025-04-28 | 2025-04-28 |  |  |
| 19 | 18 | 前端分页界面绘制与分页接口对接 | 1d | 2025-04-28 | 2025-04-28 |  |  |
| 20 | 19 | 前端任务接收、放弃接口对接 | 1d | 2025-04-28 | 2025-04-28 |  |  |
| 21 | 20 | 前端任务详情页面绘制与接口对接 | 1d | 2025-04-28 | 2025-04-28 |  |  |
| 22 | 21 | 前端风险划分界面绘制与接口对接 | 1d | 2025-04-28 | 2025-04-28 |  |  |
| 23 | 22 | 前端任务提交界面与接口对接 | 1d | 2025-04-28 | 2025-04-28 |  |  |
| 24 | 23 | 前端影像界面与接口对接 | 1d | 2025-04-28 | 2025-04-28 |  |  |
| 25 | 24 | 功能测试 | 10d | 2025-06-09 | 2025-06-20 |  | waiting |
| 26 | 25 | 安全测试 | 5d | 2025-06-16 | 2025-06-20 |  | waiting |
| 27 | 26 | 性能测试 | 5d | 2025-06-16 | 2025-06-20 |  | waiting |
| 28 | 27 | 预上线 | 5d | 2025-06-23 | 2025-06-27 |  | waiting |
